# dailyMarket-2

Schedule from MS Project, 2010-04-09 to 2010-10-29.

## Calendars

- Standard: Mon-Fri 08:00-12:00, 13:00-17:00; Sat-Sun off. Exceptions (off unless hours are given): 2010-04-17 08:00-12:00, 13:00-17:00, 2010-04-24 08:00-12:00, 13:00-17:00, 2010-05-01 08:00-12:00, 13:00-17:00, 2010-05-08 08:00-12:00, 13:00-17:00, 2010-05-15 08:00-12:00, 13:00-17:00, 2010-05-22 08:00-12:00, 13:00-17:00, 2010-05-30 08:00-12:00, 13:00-17:00, 2010-06-05 08:00-12:00, 13:00-17:00, 2010-06-19 08:00-12:00, 13:00-17:00, 2010-06-27 08:00-12:00, 13:00-17:00, 2010-07-03 to 2010-07-04 08:00-12:00, 13:00-17:00, 2010-07-10 to 2010-07-11 08:00-12:00, 13:00-17:00, 2010-07-17 08:00-12:00, 13:00-17:00, 2010-07-31 08:00-12:00, 13:00-17:00, 2010-08-07 08:00-12:00, 13:00-17:00, 2010-08-21 08:00-12:00, 13:00-17:00, 2010-09-18 08:00-12:00, 13:00-17:00, 2010-10-02 08:00-12:00, 13:00-17:00, 2010-10-09 08:00-12:00, 13:00-17:00, 2010-10-16 08:00-12:00, 13:00-17:00, 2010-10-23 08:00-12:00, 13:00-17:00.

## Schedule

| ID | WBS | Task | Duration | Start | Finish | Predecessors | Total slack | Free slack | Constraint |
| --- | --- | --- | --- | --- | --- | --- | --- | --- | --- |
| 1 | 1.0 | **Proyecto DailyMarket** | 169d | 2010-04-09 | 2010-10-29 |  | 0d |  | must start on 2010-04-09 |
| 2 | 1.1 | **Fase Estructuración** | 18d | 2010-04-09 | 2010-04-30 |  | 0d |  |  |
| 3 | 1.1.1 | Definición de propuestas | 6d | 2010-04-09 | 2010-04-16 |  | 0d |  | finish no earlier than 2010-04-16 |
| 4 | 1.1.2 | Especificación de funcionalidades de la propuesta seleccionada | 6d | 2010-04-17 | 2010-04-23 | 3 | 0d |  | must start on 2010-04-17 |
| 5 | 1.1.3 | Elaboración del alcance de la propuesta elegida | 6d | 2010-04-17 | 2010-04-23 | 3 | 0d |  | must start on 2010-04-17 |
| 6 | 1.1.4 | Elaboración de matriz de responsabilidades y roles | 6d | 2010-04-24 | 2010-04-30 | 4, 5 | 10d |  | finish no earlier than 2010-04-30 |
| 7 | 1.2 | **Fase Planificación** | 18d | 2010-05-01 | 2010-05-21 | 2 | 1d | 0d |  |
| 8 | 1.2.1 | Elaboración de la carta Gantt | 6d | 2010-05-01 | 2010-05-07 | 2 | 10d | 2d | finish no earlier than 2010-05-07 |
| 9 | 1.2.2 | Elaboración de la WBS | 2d | 2010-05-08 | 2010-05-10 | 2 | 8d | 0d | finish no earlier than 2010-05-10 |
| 10 | 1.2.3 | Elaboración Red y cronograma | 3d | 2010-05-11 | 2010-05-13 | 8, 9 | 8d |  | start no earlier than 2010-05-11 |
| 11 | 1.2.4 | Definición de alcances , limites y supuestos | 3d | 2010-05-11 | 2010-05-13 | 2 | 8d |  | start no earlier than 2010-05-11 |
| 12 | 1.2.5 | Definir plataforma Tecnologica | 2d | 2010-05-14 | 2010-05-15 | 2 | 6d |  | start no earlier than 2010-05-14 |
| 13 | 1.2.6 | Elaboración de factibilidad Economica | 6d | 2010-05-15 | 2010-05-21 | 2 | 0d |  | must start on 2010-05-15 |
| 14 | 1.2.7 | Elaborar matriz comunicacional | 6d | 2010-05-15 | 2010-05-21 | 2 | 0d |  | must start on 2010-05-15 |
| 15 | 1.2.8 | Definir Riesgos | 6d | 2010-05-15 | 2010-05-21 | 2 | 0d |  | must start on 2010-05-15 |
| 16 | 1.3 | **Fase Ejecución** | 127d | 2010-05-22 | 2010-10-22 | 7 | 1d | 0d |  |
| 17 | 1.3.1 | **Fase 0: Inicio del proyecto.** | 6d | 2010-05-22 | 2010-05-28 | 7 | 0d |  |  |
| 18 | 1.3.1.1 | Elaboración definitiva de la matriz de responsabilidades y roles | 2d | 2010-05-22 | 2010-05-24 | 7 | 4d |  | finish no earlier than 2010-05-24 |
| 19 | 1.3.1.2 | Elaborar PPT de la Presentación Comercial | 5d | 2010-05-24 | 2010-05-28 | 7 | 0d |  | start no earlier than 2010-05-24 |
| 20 | 1.3.1.3 | Capacitar personal en UML | 5d | 2010-05-24 | 2010-05-28 | 7 | 0d |  | start no earlier than 2010-05-24 |
| 21 | 1.3.2 | **Fase 1: Análisis de infraestructura de la solución** | 7d | 2010-05-29 | 2010-06-05 | 17 | 0d |  |  |
| 22 | 1.3.2.1 | Elaborar Análisis de Infraestructura de Comunicaciones | 2d | 2010-05-30 | 2010-05-31 | 17 | 23d |  | start no earlier than 2010-05-29 |
| 23 | 1.3.2.2 | Elaborar Análisis Infraestructura de Hardware y Software (Puestos) | 3d | 2010-05-30 | 2010-06-01 | 17 | 18d | 0d | start no earlier than 2010-05-30 |
| 24 | 1.3.2.3 | Elaborar Análisis de Infraestructura de Hardware y Software (Servidores) | 2d | 2010-05-31 | 2010-06-01 | 17 | 20d | 2d | start no earlier than 2010-05-31 |
| 25 | 1.3.2.4 | Analizar Infraestructura de Hardware y Software (Entorno Desarrollo y Testing) | 2d | 2010-05-29 | 2010-05-31 | 17 | 0d |  | must start on 2010-05-29 |
| 26 | 1.3.2.5 | Analizar Implementación de Infraestructura en puestos | 2d | 2010-06-02 | 2010-06-03 | 23 | 18d | 0d | finish no earlier than 2010-06-03 |
| 27 | 1.3.2.6 | Actualizar documentos de Infraestructura de HW y SW | 2d | 2010-06-04 | 2010-06-05 | 23, 24, 25, 26 | 18d |  | start no earlier than 2010-06-04 |

| ID | WBS | Task | Duration | Start | Finish | Predecessors | Total slack | Free slack | Constraint |
| --- | --- | --- | --- | --- | --- | --- | --- | --- | --- |
| 28 | 1.3.3 | **Fase 2: Análisis Funcional** | 22d | 2010-06-07 | 2010-07-02 | 21 | 18d |  |  |
| 29 | 1.3.3.1 | Elaborar documento de reconocimiento | 1d | 2010-06-07 | 2010-06-07 | 21 | 18d | 0d | start no earlier than 2010-06-07 |
| 30 | 1.3.3.2 | Elaborar documento de requerimientos funcionales | 2d | 2010-06-08 | 2010-06-09 | 29 | 18d | 0d | start no earlier than 2010-06-08 |
| 31 | 1.3.3.3 | Elaborar la especificación de los requerimientos | 2d | 2010-06-10 | 2010-06-11 | 30 | 18d | 0d | finish no earlier than 2010-06-11 |
| 32 | 1.3.3.4 | Elaborar Modelo de dominio | 2d | 2010-06-11 | 2010-06-14 | 21 | 112d |  | start no earlier than 2010-06-11 |
| 33 | 1.3.3.5 | Desarrollar la matriz de trazabilidad de requerimientos | 1d | 2010-06-14 | 2010-06-14 | 31 | 18d | 0d | finish no earlier than 2010-06-14 |
| 34 | 1.3.3.6 | **Elaborar diagramas y especificación de casos de uso** | 16d | 2010-06-15 | 2010-07-02 | 33 | 8d | 0d |  |
| 35 | 1.3.3.6.1 | Elaborar Casos de uso Modulo de Accesos al Sistema | 5d | 2010-06-15 | 2010-06-19 | 33 | 19d |  | start no earlier than 2010-06-15 |
| 36 | 1.3.3.6.2 | Elaborar Casos de uso Modulo de Venta | 5d | 2010-06-15 | 2010-06-19 | 33 | 19d |  | finish no earlier than 2010-06-19 |
| 37 | 1.3.3.6.3 | Elaborar Casos de uso Modulo de Stock | 5d | 2010-06-15 | 2010-06-19 | 33 | 19d |  | finish no earlier than 2010-06-19 |
| 38 | 1.3.3.6.4 | Elaborar Casos de uso Modulo de Estadísticas e indicadores | 6d | 2010-06-21 | 2010-06-27 | 33 | 13d |  | start no earlier than 2010-06-20 |
| 39 | 1.3.3.6.5 | Elaborar Casos de uso Modulo de Reportes | 5d | 2010-06-28 | 2010-07-02 | 33 | 8d |  | start no earlier than 2010-06-28 |
| 40 | 1.3.3.6.6 | Elaborar Casos de uso Modulo de Simulador de Compras | 6d | 2010-06-21 | 2010-06-27 | 33 | 13d |  | start no earlier than 2010-06-20 |
| 41 | 1.3.3.6.7 | Elaborar Casos de uso Modulo de ABM | 6d | 2010-06-21 | 2010-06-27 | 33 | 13d |  | start no earlier than 2010-06-20 |
| 42 | 1.3.4 | **Fase 3: Diseño** | 14d | 2010-07-03 | 2010-07-16 | 34 | 0d |  |  |
| 43 | 1.3.4.1 | Elaborar diagrama de clases | 2d | 2010-07-03 | 2010-07-04 | 34 | 12d |  | finish no earlier than 2010-07-04 |
| 44 | 1.3.4.2 | Elaborar diagrama de entidad relación | 2d | 2010-07-03 | 2010-07-04 | 34 | 10d | 0d | finish no earlier than 2010-07-04 |
| 45 | 1.3.4.3 | Elaborar diccionario de datos | 2d | 2010-07-05 | 2010-07-06 | 44 | 10d |  | finish no earlier than 2010-07-06 |
| 46 | 1.3.4.4 | Elaborar diagrama componentes | 3d | 2010-07-05 | 2010-07-07 | 34 | 9d |  | start no earlier than 2010-07-05 |
| 47 | 1.3.4.5 | Elaborar diagrama de despliegue | 3d | 2010-07-08 | 2010-07-10 | 34 | 6d |  | start no earlier than 2010-07-08 |
| 48 | 1.3.4.6 | Elaborar documento de arquitectura de software | 2d | 2010-07-10 | 2010-07-11 | 34 | 5d |  | finish no earlier than 2010-07-11 |
| 49 | 1.3.4.7 | Diseñar interfaces | 6d | 2010-07-11 | 2010-07-16 | 34 | 0d |  | start no earlier than 2010-07-11 |
| 50 | 1.3.5 | **Fase 4: Construcción** | 60d | 2010-07-17 | 2010-10-01 | 42 | 0d |  |  |
| 51 | 1.3.5.1 | **Desarrollo del Modulo de Accesos al Sistema** | 6d | 2010-07-17 | 2010-07-23 | 42 | 0d |  |  |
| 52 | 1.3.5.1.1 | Desarrollar Apertura de cajas ( validación de huella digital ) | 3d | 2010-07-17 | 2010-07-20 | 42 | 62d | 0d | finish no earlier than 2010-07-20 |
| 53 | 1.3.5.1.2 | Desarrollar Cierre de cajas ( validación de huella digital) | 3d | 2010-07-17 | 2010-07-20 | 42 | 0d |  | must start on 2010-07-17 |
| 54 | 1.3.5.1.3 | Desarrollar Login de acuerdo al ROL | 3d | 2010-07-17 | 2010-07-20 | 42 | 0d |  | must start on 2010-07-17 |
| 55 | 1.3.5.1.4 | Realizar pruebas unitarias al modulo | 3d | 2010-07-21 | 2010-07-23 | 52, 53, 54 | 62d |  | start no earlier than 2010-07-21 |

| ID | WBS | Task | Duration | Start | Finish | Predecessors | Total slack | Free slack | Constraint |
| --- | --- | --- | --- | --- | --- | --- | --- | --- | --- |
| 56 | 1.3.5.2 | **Desarrollo del Modulo de Venta** | 6d | 2010-07-23 | 2010-07-30 | 42 | 57d |  |  |
| 57 | 1.3.5.2.1 | Desarrollar Registro de venta de producto ( Lector de código de barras ) | 4d | 2010-07-23 | 2010-07-28 | 42 | 57d | 0d | start no earlier than 2010-07-23 |
| 58 | 1.3.5.2.2 | Desarrollar Registro de pago-emisión de ticket | 4d | 2010-07-23 | 2010-07-28 | 42 | 57d | 0d | start no earlier than 2010-07-23 |
| 59 | 1.3.5.2.3 | Realizar pruebas unitarias al modulo | 2d | 2010-07-29 | 2010-07-30 | 57, 58 | 57d |  | start no earlier than 2010-07-29 |
| 60 | 1.3.5.3 | **Desarrollo del Modulo de Stock** | 6d | 2010-07-31 | 2010-08-06 | 42 |  |  |  |
| 61 | 1.3.5.3.1 | Desarrollar proceso Actualizar Stock | 2d | 2010-08-01 | 2010-08-03 | 42 | 0d |  | must start on 2010-08-01 |
| 62 | 1.3.5.3.2 | Desarrollar Envíos de Alertas | 2d | 2010-08-01 | 2010-08-03 | 42 | 0d |  | must start on 2010-08-01 |
| 63 | 1.3.5.3.3 | Desarrollar Controlar Stock para la generación de alertas | 2d | 2010-08-01 | 2010-08-03 | 42 | 0d |  | must start on 2010-08-01 |
| 64 | 1.3.5.3.4 | Realizar pruebas unitarias al modulo | 3d | 2010-08-04 | 2010-08-06 | 61, 62, 63 | 67d |  | start no earlier than 2010-08-04 |
| 65 | 1.3.5.4 | **Desarrollo del Modulo de Estadísticas e indicadores** | 11d | 2010-08-07 | 2010-08-20 | 42 | 40d |  |  |
| 66 | 1.3.5.4.1 | Desarrollar Seguimiento estadístico de articulos vendidos | 7d | 2010-08-07 | 2010-08-16 | 42 | 40d | 0d | finish no earlier than 2010-08-16 |
| 67 | 1.3.5.4.2 | Desarrollar Volumen de ventas | 7d | 2010-08-07 | 2010-08-16 | 42 | 40d | 0d | finish no earlier than 2010-08-16 |
| 68 | 1.3.5.4.3 | Desarrollar seguimiento de alertas generadas | 7d | 2010-08-07 | 2010-08-16 | 42 | 40d | 0d | finish no earlier than 2010-08-16 |
| 69 | 1.3.5.4.4 | Desarrollar seguimiento de empleados | 7d | 2010-08-07 | 2010-08-16 | 42 | 40d | 0d | finish no earlier than 2010-08-16 |
| 70 | 1.3.5.4.5 | Realizar pruebas unitarias al modulo | 4d | 2010-08-17 | 2010-08-20 | 66, 67, 68, 69 | 40d |  | start no earlier than 2010-08-17 |
| 71 | 1.3.5.5 | **Desarrollar Modulo de Reportes** | 20d | 2010-08-21 | 2010-09-16 | 42 | 20d |  |  |
| 72 | 1.3.5.5.2 | Desarrollar reportes de estadísticas | 11d | 2010-08-21 | 2010-09-03 | 42 | 24d | 4d | finish no earlier than 2010-09-03 |
| 73 | 1.3.5.5.3 | Desarrollar lista de precios | 11d | 2010-08-21 | 2010-09-03 | 42 | 24d | 4d | finish no earlier than 2010-09-03 |
| 74 | 1.3.5.5.4 | Realizar pruebas unitarias al modulo | 5d | 2010-09-10 | 2010-09-16 | 72, 73 | 20d |  | start no earlier than 2010-09-10 |
| 75 | 1.3.5.6 | **Desarrollar Modulo de Simulador de Compras** | 11d | 2010-09-18 | 2010-10-01 | 42 | 8d |  |  |
| 76 | 1.3.5.6.1 | Desarrollar Simulador de compras | 7d | 2010-09-18 | 2010-09-27 | 42 | 8d | 0d | finish no earlier than 2010-09-27 |
| 77 | 1.3.5.6.2 | Realizar pruebas unitarias al modulo | 4d | 2010-09-28 | 2010-10-01 | 76 | 8d |  | start no earlier than 2010-09-28 |
| 78 | 1.3.5.7 | **Desarrollar Modulo de ABM** | 11d | 2010-08-11 | 2010-08-24 | 42 | 0d |  |  |
| 79 | 1.3.5.7.1 | Desarrollar ABM de Artículos ( generación de códigos de barras ) | 9d | 2010-08-11 | 2010-08-21 | 42 | 0d |  | start no earlier than 2010-08-11 |
| 80 | 1.3.5.7.2 | Desarrollar ABM de Usuarios | 9d | 2010-08-11 | 2010-08-21 | 42 | 0d |  | finish no earlier than 2010-08-21 |
| 81 | 1.3.5.7.3 | Desarrollar ABM de Cajas | 9d | 2010-08-11 | 2010-08-21 | 42 | 0d |  | finish no earlier than 2010-08-21 |
| 82 | 1.3.5.7.4 | Desarrollar ABM de Roles | 9d | 2010-08-11 | 2010-08-21 | 42 | 0d |  | finish no earlier than 2010-08-21 |
| 83 | 1.3.5.7.5 | Realizar pruebas unitarias al modulo | 2d | 2010-08-22 | 2010-08-24 | 79, 80, 81, 82 | 0d |  | must start on 2010-08-22 |

| ID | WBS | Task | Duration | Start | Finish | Predecessors | Total slack | Free slack | Constraint |
| --- | --- | --- | --- | --- | --- | --- | --- | --- | --- |
| 84 | 1.3.6 | **Fase 5: Testing** | 6d | 2010-10-02 | 2010-10-08 | 50 | 8d | 0d |  |
| 85 | 1.3.6.1 | Realizar pruebas de integración Modulo Accesos al Sistema | 6d | 2010-10-02 | 2010-10-08 | 50 | 8d |  | start no earlier than 2010-10-02 |
| 86 | 1.3.6.2 | Realizar pruebas de integración Modulo de Ventas | 6d | 2010-10-02 | 2010-10-08 | 50 | 8d |  | start no earlier than 2010-10-02 |
| 87 | 1.3.6.3 | Realizar pruebas de integración Modulo de Stock | 6d | 2010-10-02 | 2010-10-08 | 50 | 8d |  | start no earlier than 2010-10-02 |
| 88 | 1.3.6.4 | Realizar pruebas de integración Modulo de Estadísticas e indicadores | 6d | 2010-10-02 | 2010-10-08 | 50 | 8d |  | start no earlier than 2010-10-02 |
| 89 | 1.3.6.5 | Realizar pruebas de integración Modulo Reportes | 6d | 2010-10-02 | 2010-10-08 | 50 | 8d |  | start no earlier than 2010-10-02 |
| 90 | 1.3.6.6 | Realizar pruebas de integración Modulo Simulador de Compras | 6d | 2010-10-02 | 2010-10-08 | 50 | 8d |  | start no earlier than 2010-10-02 |
| 91 | 1.3.6.7 | Realizar pruebas de integración Modulo de ABM | 6d | 2010-10-02 | 2010-10-08 | 50 | 8d |  | start no earlier than 2010-10-02 |
| 92 | 1.3.7 | **Fase 6: Implementación** | 12d | 2010-10-09 | 2010-10-22 | 84 | 2d |  |  |
| 93 | 1.3.7.1 | Elaborar manual del usuario | 6d | 2010-10-09 | 2010-10-15 | 84 | 8d |  | finish no earlier than 2010-10-15 |
| 94 | 1.3.7.2 | Elaborar el Manual de instalación | 6d | 2010-10-16 | 2010-10-22 | 84 | 2d |  | finish no earlier than 2010-10-22 |
| 95 | 1.4 | **Fase Cierre** | 6d | 2010-10-23 | 2010-10-29 | 16 |  |  |  |
| 96 | 1.4.1 | Elaborar documento de cierre del proyecto | 2d | 2010-10-26 | 2010-10-27 | 16 | 0d |  | start no earlier than 2010-10-26 |
| 97 | 1.4.2 | Elaborar documento de lecciones aprendidas | 2d | 2010-10-28 | 2010-10-29 | 96 | 0d |  | start no earlier than 2010-10-28 |
| 98 | 1.5 | **Fase Seguimiento y Control** | 152d | 2010-04-30 | 2010-10-29 |  | 0d |  |  |
| 99 | 1.5.1 | Presentar informe de avance: Gantt | 1d | 2010-05-07 | 2010-05-07 |  | 0d |  | must start on 2010-05-07 |
| 100 | 1.5.2 | Presentar informe de avance: Plan de Gestión de Proyecto Preliminar | 1d | 2010-05-14 | 2010-05-14 |  | 0d |  | must start on 2010-05-14 |
| 101 | 1.5.3 | Presentar informe de avance: Plan de Gestión de Proyecto | 1d | 2010-05-21 | 2010-05-21 |  | 0d |  | must start on 2010-05-21 |
| 102 | 1.5.4 | Presentar informe de avance: Manual de usuario | 1d | 2010-10-15 | 2010-10-15 |  | 0d |  | must start on 2010-10-15 |
| 103 | 1.5.5 | Presentar informe de avance: Manual de instalación | 1d | 2010-10-22 | 2010-10-22 |  | 0d |  | must start on 2010-10-22 |
| 104 | 1.5.6 | Presentar informe de avance: Documento pruebas de integración | 1d | 2010-09-10 | 2010-09-10 |  | 40d |  | start no earlier than 2010-09-10 |
| 105 | 1.5.7 | Presentar informe de avance:Diagrama de clases | 1d | 2010-07-09 | 2010-07-09 |  | 0d |  | must start on 2010-07-09 |
| 106 | 1.5.8 | Presentar informe de avance: Diagrama de entidad relación | 1d | 2010-07-09 | 2010-07-09 |  | 0d |  | must start on 2010-07-09 |
| 107 | 1.5.9 | Presentar informe de avance: Diccionario de datos | 1d | 2010-07-09 | 2010-07-09 |  | 0d |  | must start on 2010-07-09 |
| 108 | 1.5.10 | Presentar informe de avance: Diagrama componentes | 1d | 2010-07-09 | 2010-07-09 |  | 0d |  | must start on 2010-07-09 |
| 109 | 1.5.11 | Presentar informe de avance: Diagrama de despliegue | 1d | 2010-07-16 | 2010-07-16 |  | 0d |  | must start on 2010-07-16 |
| 110 | 1.5.12 | Presentar informe de avance: Documento de arquitectura de software | 1d | 2010-07-16 | 2010-07-16 |  | 0d |  | must start on 2010-07-16 |
| 111 | 1.5.13 | Presentar informe de avance: Diseño de interfaces | 1d | 2010-07-16 | 2010-07-16 |  | 0d |  | must start on 2010-07-16 |
| 112 | 1.5.14 | Presentar informe de avance: Código fuente del Modulo de Accesos al Sistema | 1d | 2010-07-23 | 2010-07-23 |  | 0d |  | must start on 2010-07-23 |
| 113 | 1.5.15 | Presentar informe de avance: Documento de pruebas unitarias Modulo de Accesos al Sistema | 1d | 2010-07-23 | 2010-07-23 |  | 0d |  | must start on 2010-07-23 |
| 114 | 1.5.16 | Presentar informe de avance: Documento de pruebas unitarias Modulo de Ventas | 1d | 2010-07-30 | 2010-07-30 |  | 0d |  | must start on 2010-07-30 |
| 115 | 1.5.17 | Presentar informe de avance: Código fuente del Modulo de Venta | 1d | 2010-07-30 | 2010-07-30 |  | 0d |  | must start on 2010-07-30 |
| 116 | 1.5.18 | Presentar informe de avance: Documento de pruebas unitarias Modulo de Stock | 1d | 2010-08-06 | 2010-08-06 |  | 0d |  | must start on 2010-08-06 |
| 117 | 1.5.19 | Presentar informe de avance: Código fuente del Modulo de Stock | 1d | 2010-08-06 | 2010-08-06 |  | 0d |  | must start on 2010-08-06 |
| 118 | 1.5.20 | Presentar informe de avance: Preliminar del modulo de estadisticas e indicadores | 1d | 2010-08-13 | 2010-08-13 |  | 0d |  | must start on 2010-08-13 |
| 119 | 1.5.21 | Presentar informe de avance: Documento de pruebas unitarias de Estadisticas e indicadores | 1d | 2010-08-20 | 2010-08-20 |  | 0d |  | must start on 2010-08-20 |
| 120 | 1.5.22 | Presentar informe de avance: Código fuente del Modulo de Estadísticas e indicadores | 1d | 2010-08-20 | 2010-08-20 |  | 0d |  | must start on 2010-08-20 |
| 121 | 1.5.23 | Presentar informe de avance: Documento de pruebas unitarias del Modulo ABM | 1d | 2010-08-27 | 2010-08-27 |  | 50d |  | start no earlier than 2010-08-27 |
| 122 | 1.5.24 | Presentar informe de avance: Código fuente del Modulo ABM | 1d | 2010-08-27 | 2010-08-27 |  | 50d |  | start no earlier than 2010-08-27 |
| 123 | 1.5.25 | Presentar informe de avance: Preliminar del Modulo de Reportes | 1d | 2010-08-27 | 2010-08-27 |  | 0d |  | must start on 2010-08-27 |
| 124 | 1.5.26 | Presentar informe de avance: Preliminar del Modulo de Reportes | 1d | 2010-09-03 | 2010-09-03 |  | 0d |  | must start on 2010-09-03 |
| 125 | 1.5.27 | Presentar informe de avance: Preliminar del modulo de simulacion | 1d | 2010-09-10 | 2010-09-10 |  | 0d |  | must start on 2010-09-10 |
| 126 | 1.5.28 | Presentar informe de avance: Código fuente del Modulo de reportes | 1d | 2010-09-17 | 2010-09-17 |  | 0d |  | must start on 2010-09-17 |
| 127 | 1.5.29 | Presentar informe de avance: Documento de pruebas unitarias del Modulo de reportes | 1d | 2010-09-17 | 2010-09-17 |  | 0d |  | must start on 2010-09-17 |
| 128 | 1.5.30 | Presentar informe de avance: Preliminar del Modulo de simulación | 1d | 2010-09-24 | 2010-09-24 |  | 0d |  | must start on 2010-09-24 |
| 129 | 1.5.31 | Presentar informe de avance: Código fuente del Modulo Simulador de compras | 1d | 2010-10-01 | 2010-10-01 |  | 0d |  | must start on 2010-10-01 |
| 130 | 1.5.32 | Presentar informe de avance: Documento de pruebas unitarias del Modulo Simulador de compras | 1d | 2010-10-01 | 2010-10-01 |  | 0d |  | must start on 2010-10-01 |
| 131 | 1.5.33 | Presentar informe de avance : Documento de Análisis Funcional | 1d | 2010-07-02 | 2010-07-02 |  | 0d |  | must start on 2010-07-02 |
| 132 | 1.5.34 | Presentar informe de avance: Casos de uso modulo de Reportes | 1d | 2010-06-25 | 2010-06-25 |  | 0d |  | must start on 2010-06-25 |
| 133 | 1.5.35 | Presentar informe de avance:Casos de uso Modulo de Stock y Modulo de Venta | 1d | 2010-06-18 | 2010-06-18 |  | 0d |  | must start on 2010-06-18 |
| 134 | 1.5.36 | Presentar informe de avance: Casos de uso del modulo de accesos al sistema | 1d | 2010-06-11 | 2010-06-11 |  | 0d |  | must start on 2010-06-11 |
| 135 | 1.5.37 | Presentar informe de avance : Documento de infraestructura | 1d | 2010-06-04 | 2010-06-04 |  | 0d |  | must start on 2010-06-04 |
| 136 | 1.5.38 | Presentar informe de avance: Presentacion Comercial PPT | 1d | 2010-06-04 | 2010-06-04 |  | 0d |  | must start on 2010-06-04 |
| 137 | 1.5.39 | Presentar informe de avance: Documento de capacitacion en UML | 1d | 2010-05-28 | 2010-05-28 |  | 0d |  | must start on 2010-05-28 |
| 138 | 1.5.40 | Presentar informe de avance: Matriz de roles y responsabilidades | 1d | 2010-05-28 | 2010-05-28 |  | 0d |  | must start on 2010-05-28 |
| 139 | 1.5.41 | Presentar informe de avance: Acta de Proyecto | 1d | 2010-04-30 | 2010-04-30 |  | 0d |  | must start on 2010-04-30 |
| 140 | 1.5.42 | Presentar informe de avance: Documento de lecciones aprendidas | 1d | 2010-10-29 | 2010-10-29 |  | 0d |  | must start on 2010-10-29 |
| 141 | 1.5.43 | Presentar informe de avance: Acta de cierre del proyecto | 1d | 2010-10-29 | 2010-10-29 |  | 0d |  | must start on 2010-10-29 |
